# SGI

Schedule from MS Project, 2012-03-20 to 2012-12-19.

## Calendars

- Estándar: Mon-Fri 09:00-13:00, 15:00-19:00; Sat-Sun off.

## Resources

| Resource |
| --- |
| Equipo de Analistas CSTI |
| Usuarios BELCORP |
| AP1 |
| APL |
| AP2 |
| AF |
| PWC |
| JP |
| APL |
| CPSAA |

## Schedule

| ID | WBS | Task | Duration | Start | Finish | Predecessors | Total slack | Constraint | Resources | Work |
| --- | --- | --- | --- | --- | --- | --- | --- | --- | --- | --- |
| 1 | 1 | **Bitacora de Operaciones** | 197d? | 2012-03-20 | 2012-12-19 |  | 0d |  |  | 1120h |
| 2 | 1.1 | **Levantamiento de información** | 24d | 2012-09-24 | 2012-10-25 |  | 0d |  |  | 32h |
| 3 | 1.1.1 | **Realizar reunión de levantamiento de información** | 10d | 2012-09-24 | 2012-10-05 |  | 14d |  |  |  |
| 4 | 1.1.1.1 | 1 | 1d | 2012-09-24 | 2012-09-24 |  | 9d | start no earlier than 2012-09-24 |  |  |
| 5 | 1.1.1.2 | 2 | 1d | 2012-09-25 | 2012-09-25 |  | 8d | start no earlier than 2012-09-25 |  |  |
| 6 | 1.1.1.3 | 3 | 1d | 2012-09-26 | 2012-09-26 |  | 7d | start no earlier than 2012-09-26 |  |  |
| 7 | 1.1.1.4 | 4 | 1d | 2012-09-27 | 2012-09-27 |  | 6d | start no earlier than 2012-09-27 |  |  |
| 8 | 1.1.1.5 | 5 | 1d | 2012-09-28 | 2012-09-28 |  | 5d | start no earlier than 2012-09-28 |  |  |
| 9 | 1.1.1.6 | 6 | 1d | 2012-10-01 | 2012-10-01 |  | 4d | start no earlier than 2012-09-29 |  |  |
| 10 | 1.1.1.7 | 9 | 1d | 2012-10-02 | 2012-10-02 |  | 3d | start no earlier than 2012-10-02 |  |  |
| 11 | 1.1.1.8 | 10 | 1d | 2012-10-03 | 2012-10-03 |  | 2d | start no earlier than 2012-10-03 |  |  |
| 12 | 1.1.1.9 | 11 | 1d | 2012-10-04 | 2012-10-04 |  | 1d | start no earlier than 2012-10-04 |  |  |
| 13 | 1.1.1.10 | 12 | 1d | 2012-10-05 | 2012-10-05 |  | 1d | start no earlier than 2012-10-05 |  |  |
| 14 | 1.1.2 | Elaborar BBP | 10d | 2012-09-25 | 2012-10-08 |  | 6d | finish no earlier than 2012-10-08 |  |  |
| 15 | 1.1.3 | Realizar prototipos | 10d | 2012-09-25 | 2012-10-08 |  | 0d | finish no earlier than 2012-10-08 |  |  |
| 16 | 1.1.4 | **Definición de arquitectura de aplicación** | 6d | 2012-10-09 | 2012-10-16 | 15 | 0d |  |  |  |
| 17 | 1.1.4.1 | Coordinar definición de arquitectura de aplicación | 3d | 2012-10-09 | 2012-10-11 |  | 0d |  |  |  |
| 18 | 1.1.4.2 | Definir modelo lógico | 3d | 2012-10-12 | 2012-10-16 | 17 | 0d |  |  |  |
| 19 | 1.1.5 | **Aprobación de BBP y arquitectura** | 7d | 2012-10-17 | 2012-10-25 | 14, 15, 16 | 0d |  |  | 32h |
| 20 | 1.1.5.1 | Revisar propuesta | 3d | 2012-10-17 | 2012-10-19 |  | 0d | start no earlier than 2012-08-24 | CPSAA | 24h |
| 21 | 1.1.5.2 | Realizar ajustes | 3d | 2012-10-22 | 2012-10-24 | 20 | 0d |  |  |  |
| 22 | 1.1.5.3 | Revisión final | 1d | 2012-10-25 | 2012-10-25 | 21 | 0d |  | CPSAA | 8h |
| 23 | 1.2 | **Desarrollo** | 39d? | 2012-10-26 | 2012-12-19 | 2 | 0d |  |  | 712h |
| 24 | 1.2.1 | **Modulo Web** | 22d? | 2012-10-26 | 2012-11-26 |  | 13d |  | AP2 | 176h |
| 25 | 1.2.1.1 | **Modulo ocurrencias** | 1d? | 2012-10-26 | 2012-10-26 |  | 34d |  |  |  |
| 26 | 1.2.1.1.1 | Desarrollar | 1d? | 2012-10-26 | 2012-10-26 |  | 34d |  |  |  |
| 27 | 1.2.1.1.2 | Realizar pruebas unitarias | 1d? | 2012-10-26 | 2012-10-26 |  | 34d |  |  |  |

| ID | WBS | Task | Duration | Start | Finish | Predecessors | Total slack | Free slack | Resources | Work |
| --- | --- | --- | --- | --- | --- | --- | --- | --- | --- | --- |
| 28 | 1.2.1.2 | **Modulo paradas** | 22d? | 2012-10-26 | 2012-11-26 |  | 13d |  |  |  |
| 29 | 1.2.1.2.1 | Desarrollar | 1d? | 2012-10-26 | 2012-10-26 |  | 34d |  |  |  |
| 30 | 1.2.1.2.2 | Realizar pruebas unitarias | 1d? | 2012-10-26 | 2012-10-26 |  | 34d |  |  |  |
| 31 | 1.2.1.2.3 | **Integración con SAP** | 2d? | 2012-11-23 | 2012-11-26 | 39 | 13d |  |  |  |
| 32 | 1.2.1.2.3.1 | Desarrollar | 1d? | 2012-11-23 | 2012-11-23 |  | 13d | 0d |  |  |
| 33 | 1.2.1.2.3.2 | Realizar Pruebas Unitarias | 1d? | 2012-11-26 | 2012-11-26 | 32 | 13d |  |  |  |
| 34 | 1.2.1.3 | **Modulo cambio de equipo** | 1d? | 2012-10-26 | 2012-10-26 |  | 34d |  |  |  |
| 35 | 1.2.1.3.1 | Desarrollar | 1d? | 2012-10-26 | 2012-10-26 |  | 34d |  |  |  |
| 36 | 1.2.1.3.2 | Realizar pruebas unitarias | 1d? | 2012-10-26 | 2012-10-26 |  | 34d |  |  |  |
| 37 | 1.2.1.4 | **Modulo cambio de producto** | 20d? | 2012-10-26 | 2012-11-22 |  | 13d |  |  |  |
| 38 | 1.2.1.4.1 | Desarrollar | 1d? | 2012-10-26 | 2012-10-26 |  | 34d |  |  |  |
| 39 | 1.2.1.4.2 | Realizar pruebas unitarias | 20d | 2012-10-26 | 2012-11-22 |  | 13d | 0d |  |  |
| 40 | 1.2.2 | **Modulo Reportes** | 35d | 2012-10-26 | 2012-12-13 |  | 0d |  | APL | 280h |
| 41 | 1.2.2.1 | Desarrollar | 25d | 2012-10-26 | 2012-11-29 |  | 0d |  |  |  |
| 42 | 1.2.2.2 | Realizar pruebas unitarias | 10d | 2012-11-30 | 2012-12-13 | 41 | 0d |  |  |  |
| 43 | 1.2.3 | **Modelo Seguridad** | 20d | 2012-10-26 | 2012-11-22 |  | 15d |  | AP1 | 160h |
| 44 | 1.2.3.1 | Desarrollar | 12d | 2012-10-26 | 2012-11-12 |  | 15d | 0d |  |  |
| 45 | 1.2.3.2 | Realizar pruebas unitarias | 8d | 2012-11-13 | 2012-11-22 | 44 | 15d |  |  |  |
| 46 | 1.2.4 | **Integración** | 4d | 2012-12-14 | 2012-12-19 | 24, 40, 43 | 0d |  | APL; AP1; AP2 | 96h |
| 47 | 1.2.4.1 | Integrar modulos | 4d | 2012-12-14 | 2012-12-19 |  | 0d |  |  |  |
| 48 | 1.3 | **Pruebas** | 1d? | 2012-03-20 | 2012-03-20 |  | 188d | 0d | APL; AF; PWC | 24h |
| 49 | 1.3.1 | Pruebas Unitarias | 1d? | 2012-03-20 | 2012-03-20 |  | 188d |  |  |  |
| 50 | 1.3.2 | Pruebas Integrales | 1d? | 2012-03-20 | 2012-03-20 |  | 188d |  |  |  |
| 51 | 1.4 | **Pase a producción** | 1d | 2012-03-21 | 2012-03-21 | 48 | 188d | 0d | APL; PWC; AP1 | 24h |
| 52 | 1.4.1 | Realizar pase a producción | 1d | 2012-03-21 | 2012-03-21 |  | 188d |  |  |  |

| ID | WBS | Task | Duration | Start | Finish | Predecessors | Total slack | Constraint | Resources | Work |
| --- | --- | --- | --- | --- | --- | --- | --- | --- | --- | --- |
| 53 | 1.5 | **Capacitación** | 7d | 2012-03-22 | 2012-03-30 | 51 | 188d |  | AP1 | 56h |
| 54 | 1.5.1 | Realizar capacitación a usuarios | 7d | 2012-03-22 | 2012-03-30 |  | 188d |  |  |  |
| 55 | 1.6 | **Documentación** | 10d | 2012-10-12 | 2012-10-25 |  | 39d |  | AP1; AP2 | 160h |
| 56 | 1.6.1 | Realizar documentación (manual técnico, modelo y dicc. De datos) | 10d | 2012-10-12 | 2012-10-25 |  | 39d | start no earlier than 2012-10-12 |  |  |
| 57 | 1.7 | **Post-Producción** | 7d | 2012-03-22 | 2012-03-30 | 51 | 188d |  | AP1; AP2 | 112h |
| 58 | 1.7.1 | Realizar actividades de soporte | 7d | 2012-03-22 | 2012-03-30 |  | 188d |  |  |  |
