# SGI

Schedule from MS Project, 2012-09-24 to 2013-02-28.

## Calendars

- Estándar: Mon-Fri 09:00-13:00, 15:00-19:00; Sat-Sun off.

## Resources

| Resource |
| --- |
| CPSAA |
| AF |
| AP1 |
| AP2 |
| DW |
| ABAPER |
| CPS |
| APMOVIL |

## Schedule

| ID | WBS | Task | Type | Duration | Start | Finish | Predecessors | Total slack | Free slack | Constraint | Resources | Work |
| --- | --- | --- | --- | --- | --- | --- | --- | --- | --- | --- | --- | --- |
| 1 | 1 | **Bitacora de Operaciones** |  | 114d | 2012-09-24 | 2013-02-28 |  | 0d |  |  |  | 2680h |
| 2 | 1.1 | **Levantamiento de información** |  | 23d | 2012-09-24 | 2012-10-24 |  | 0d |  |  |  | 760h |
| 3 | 1.1.1 | **Definición de requerimientos** |  | 10d | 2012-09-24 | 2012-10-05 |  | 24d |  |  | CPSAA; AF; AP1 | 240h |
| 4 | 1.1.1.1 | 1 |  | 1d | 2012-09-24 | 2012-09-24 |  | 33d |  | start no earlier than 2012-09-24 |  |  |
| 5 | 1.1.1.2 | 2 |  | 1d | 2012-09-25 | 2012-09-25 |  | 32d |  | start no earlier than 2012-09-25 |  |  |
| 6 | 1.1.1.3 | 3 |  | 1d | 2012-09-26 | 2012-09-26 |  | 31d |  | start no earlier than 2012-09-26 |  |  |
| 7 | 1.1.1.4 | 4 |  | 1d | 2012-09-27 | 2012-09-27 |  | 30d |  | start no earlier than 2012-09-27 |  |  |
| 8 | 1.1.1.5 | 5 |  | 1d | 2012-09-28 | 2012-09-28 |  | 29d |  | start no earlier than 2012-09-28 |  |  |
| 9 | 1.1.1.6 | 6 |  | 1d | 2012-10-01 | 2012-10-01 |  | 28d |  | start no earlier than 2012-09-29 |  |  |
| 10 | 1.1.1.7 | 9 |  | 1d | 2012-10-02 | 2012-10-02 |  | 27d |  | start no earlier than 2012-10-02 |  |  |
| 11 | 1.1.1.8 | 10 |  | 1d | 2012-10-03 | 2012-10-03 |  | 26d |  | start no earlier than 2012-10-03 |  |  |
| 12 | 1.1.1.9 | 11 |  | 1d | 2012-10-04 | 2012-10-04 |  | 25d |  | start no earlier than 2012-10-04 |  |  |
| 13 | 1.1.1.10 | 12 |  | 1d | 2012-10-05 | 2012-10-05 |  | 24d |  | start no earlier than 2012-10-05 |  |  |
| 14 | 1.1.2 | Realizar formularios de aplicación |  | 10d | 2012-09-24 | 2012-10-05 |  | 24d |  | start no earlier than 2012-09-24 | AF | 80h |
| 15 | 1.1.3 | Elaborar BBP |  | 12d | 2012-09-24 | 2012-10-09 |  | 0d |  | start no earlier than 2012-09-24 | AF | 96h |
| 16 | 1.1.4 | **Definición de arquitectura de aplicación** |  | 11d | 2012-10-10 | 2012-10-24 | 15 | 0d |  |  |  | 264h |
| 17 | 1.1.4.1 | Coordinar definición de arquitectura de aplicación |  | 1d | 2012-10-10 | 2012-10-10 |  | 0d |  |  | CPSAA; AF; AP1 | 24h |
| 18 | 1.1.4.2 | Definir modelo lógico |  | 4d | 2012-10-11 | 2012-10-16 | 17 | 0d |  |  | CPSAA; AF; AP1 | 96h |
| 19 | 1.1.4.3 | Definir RFCs |  | 3d | 2012-10-17 | 2012-10-19 | 18 | 0d |  |  | CPSAA; AF; AP1 | 72h |
| 20 | 1.1.4.4 | Definir integración con SGCP |  | 3d | 2012-10-22 | 2012-10-24 | 19 | 0d |  |  | CPSAA; AF; AP1 | 72h |
| 21 | 1.1.5 | **Diseño de aplicación Web** |  | 10d | 2012-10-10 | 2012-10-23 | 15 | 1d |  |  |  | 80h |
| 22 | 1.1.5.1 | Proponer línea gráfica de la aplicación |  | 3d | 2012-10-10 | 2012-10-12 |  | 1d | 0d |  | DW | 24h |
| 23 | 1.1.5.2 | Aprobar Línea Gráfica | milestone | 2d | 2012-10-15 | 2012-10-16 | 22 | 1d | 0d |  | CPSAA | 16h |
| 24 | 1.1.5.3 | Realizar prototipos con diseño gráfico |  | 3d | 2012-10-17 | 2012-10-19 | 23 | 1d | 0d |  | DW | 24h |
| 25 | 1.1.5.4 | Aprobar prototipos | milestone | 2d | 2012-10-22 | 2012-10-23 | 24 | 1d |  |  | CPSAA | 16h |

Notes:
- 14: -Uso de herramienta para dibujar los formularios. Esto no implica la parte de diseño gráfico.
- 15: -Despues de los 10 días de levantamiento de información en conjunto con la elaboración del BBP, se consideran días adicionales (trabajados en Lima) para realizar ajustes y completar definiciones del modulo de seguridad (definición de roles)
- 16: -Usar librerías estandares como jquery / -Framework:spring mvc, hibernate, etc. Se requiere reunión con Miguel Ortiz para ver preferencias.
- 18: -Mejorar modelo lógico de PM (SAP)
- 19: -Incluye definición de parámetros enviados desde la nueva aplicación a SAP, y datos insertados en SAP.
- 20: -Definir en qué tablas del SGCP se registrará la data de cambio de equipo y producto desde la nueva aplicación. Y que accesos se otorgarán. / -Definir desde que tablas del SGCP se obtendrá la información para la generación de reportes.
- 21: -2 modelos de diseño para PC y para tablet

| ID | WBS | Task | Type | Duration | Start | Finish | Predecessors | Total slack | Free slack | Constraint | Resources | Work |
| --- | --- | --- | --- | --- | --- | --- | --- | --- | --- | --- | --- | --- |
| 26 | 1.2 | **Aprobación de BBP, formularios de aplicación y modelo lógico** |  | 11d | 2012-10-25 | 2012-11-08 | 16, 21 | 0d |  |  |  | 136h |
| 27 | 1.2.1 | Realizar actualización del BBP |  | 2d | 2012-10-25 | 2012-10-26 |  | 0d |  |  | AF; AP1 | 32h |
| 28 | 1.2.2 | Revisar BBP con formularios de aplicación |  | 2d | 2012-10-29 | 2012-10-30 | 27 | 0d |  | start no earlier than 2012-08-24 | CPSAA | 16h |
| 29 | 1.2.3 | Revisar modelo lógico |  | 2d | 2012-10-31 | 2012-11-01 | 28 | 0d |  |  | CPSAA | 16h |
| 30 | 1.2.4 | Realizar ajustes al BBP |  | 4d | 2012-11-02 | 2012-11-07 | 29 | 0d |  |  | AF; AP1 | 64h |
| 31 | 1.2.5 | Aprobación final | milestone | 1d | 2012-11-08 | 2012-11-08 | 30 | 0d |  |  | CPSAA | 8h |
| 32 | 1.3 | **Desarrollo** |  | 50d | 2012-11-09 | 2013-01-17 | 2, 26 | 0d |  |  |  | 1016h |
| 33 | 1.3.1 | **Aplicación Web** |  | 45d | 2012-11-09 | 2013-01-10 |  | 0d |  |  |  | 816h |
| 34 | 1.3.1.1 | **Implementar arquitectura** |  | 8d | 2012-11-09 | 2012-11-20 |  | 2d | 0d |  |  | 64h |
| 35 | 1.3.1.1.1 | Implementar arquitectura |  | 2d | 2012-11-09 | 2012-11-12 |  | 2d | 0d |  | AP1 | 16h |
| 36 | 1.3.1.1.2 | Implementar modulo de seguridad |  | 4d | 2012-11-13 | 2012-11-16 | 35 | 2d | 0d |  | AP1 | 32h |
| 37 | 1.3.1.1.3 | Implementar ambiente para pruebas unitarias |  | 2d | 2012-11-19 | 2012-11-20 | 36 | 2d |  |  | AP1 | 16h |
| 38 | 1.3.1.2 | Implementar modelo lógico |  | 5d | 2012-11-09 | 2012-11-15 |  | 0d |  |  | AP2 | 40h |
| 39 | 1.3.1.3 | **Implementar RFCs** |  | 5d | 2012-11-09 | 2012-11-15 |  | 40d |  |  | ABAPER | 40h |
| 40 | 1.3.1.3.1 | Implementar RFC para creación de avisos |  | 5d | 2012-11-09 | 2012-11-15 |  | 40d |  |  |  |  |
| 41 | 1.3.1.4 | **Modulo ocurrencias** |  | 7d | 2012-11-16 | 2012-11-26 | 38 | 0d |  |  | AP2 | 56h |
| 42 | 1.3.1.4.1 | Implementar modulo |  | 7d | 2012-11-16 | 2012-11-26 |  | 0d |  |  |  |  |
| 43 | 1.3.1.4.2 | Realizar pruebas unitarias |  | 7d | 2012-11-16 | 2012-11-26 |  | 0d |  |  |  |  |
| 44 | 1.3.1.5 | **Modulo Alertas** |  | 9d | 2012-11-21 | 2012-12-03 | 34 | 2d | 0d |  | AP1 | 72h |
| 45 | 1.3.1.5.1 | Implementar modulo |  | 6d | 2012-11-21 | 2012-11-28 |  | 2d | 0d |  |  |  |
| 46 | 1.3.1.5.2 | Realizar pruebas unitarias |  | 6d | 2012-11-21 | 2012-11-28 |  | 2d | 0d |  |  |  |
| 47 | 1.3.1.5.3 | Implementar webservice |  | 3d | 2012-11-29 | 2012-12-03 | 45, 46 | 2d |  |  |  |  |
| 48 | 1.3.1.6 | **Funcionalidad de paradas** |  | 7d | 2012-12-04 | 2012-12-12 | 44 | 2d |  |  | AP1 | 56h |
| 49 | 1.3.1.6.1 | Implementar funcionalidad |  | 7d | 2012-12-04 | 2012-12-12 |  | 2d |  |  |  |  |
| 50 | 1.3.1.6.2 | Realizar pruebas unitarias |  | 7d | 2012-12-04 | 2012-12-12 |  | 2d |  |  |  |  |

Notes:
- 36: -Funcionalidad para gestión de roles y creación de tablas de usuario (correo electronico, imei, sms)
- 38: -Implica realizar una precarga de la data de PM (SAP)
- 41: -Incluye pruebas y diseño especial de acuerdo a si la funcionalidad se ejecuta desde la PC (navegador) o desde una tablet
- 44: -Implementar funcionalidad que permite crear tipos de alertas y que estas sean asignadas a roles de usuarios
- 47: -Para facilitar programación al modulo de movilidad. / -Utilizar REST. / -Crear parada, notificar alerta, login.
- 48: -Generación de alertas cuando la ocurrencia es del tipo parada. / -De acuerdo al tipo de falla replicar el aviso en SAP. Implementar llamada a RFCs.

| ID | WBS | Task | Type | Duration | Start | Finish | Predecessors | Total slack | Free slack | Resources | Work |
| --- | --- | --- | --- | --- | --- | --- | --- | --- | --- | --- | --- |
| 51 | 1.3.1.7 | **Funcionalidad de cambio de equipo** |  | 7d | 2012-11-27 | 2012-12-05 | 41 | 0d |  | AP2 | 56h |
| 52 | 1.3.1.7.1 | Implementar modulo |  | 7d | 2012-11-27 | 2012-12-05 |  | 0d |  |  |  |
| 53 | 1.3.1.7.2 | Realizar pruebas unitarias |  | 7d | 2012-11-27 | 2012-12-05 |  | 0d |  |  |  |
| 54 | 1.3.1.8 | **Funcionalidad de cambio de producto** |  | 7d | 2012-12-06 | 2012-12-14 | 51 | 0d |  | AP2 | 56h |
| 55 | 1.3.1.8.1 | Implementar modulo |  | 7d | 2012-12-06 | 2012-12-14 |  | 0d |  |  |  |
| 56 | 1.3.1.8.2 | Realizar pruebas unitarias |  | 7d | 2012-12-06 | 2012-12-14 |  | 0d |  |  |  |
| 57 | 1.3.1.9 | **Modulo Reportes** |  | 19d | 2012-12-17 | 2013-01-10 | 48, 54 | 0d |  | AP1; AP2 | 304h |
| 58 | 1.3.1.9.1 | Implementar modulo |  | 15d | 2012-12-17 | 2013-01-04 |  | 0d |  |  |  |
| 59 | 1.3.1.9.2 | Realizar pruebas unitarias |  | 4d | 2013-01-07 | 2013-01-10 | 58 | 0d |  |  |  |
| 60 | 1.3.1.10 | **Modulo Alertas - Aplicación movil nativa** |  | 9d | 2012-12-04 | 2012-12-14 | 44 | 19d |  |  | 72h |
| 61 | 1.3.1.10.1 | Desarrollar Servicio en Background escuchando las alertas del usuario |  | 4d | 2012-12-04 | 2012-12-07 |  | 19d | 0d | APMOVIL | 32h |
| 62 | 1.3.1.10.2 | Mostrar Alertas en el área de notificación de Android y enviar respuesta al server al interactuar el usuario |  | 3d | 2012-12-10 | 2012-12-12 | 61 | 19d | 0d | APMOVIL | 24h |
| 63 | 1.3.1.10.3 | Realizar documentación |  | 2d | 2012-12-13 | 2012-12-14 | 62 | 19d |  | APMOVIL | 16h |
| 64 | 1.3.2 | **Integración** |  | 5d | 2013-01-11 | 2013-01-17 | 33, 21 | 0d |  |  |  |
| 65 | 1.3.2.1 | Integrar modulos |  | 5d | 2013-01-11 | 2013-01-17 |  | 0d |  |  |  |
| 66 | 1.3.3 | **Documentación** |  | 25d | 2012-11-09 | 2012-12-13 |  | 25d |  | AF | 200h |
| 67 | 1.3.3.1 | Realizar plan de pruebas |  | 1d | 2012-11-09 | 2012-11-09 |  | 25d | 0d |  |  |
| 68 | 1.3.3.2 | Realizar casos de prueba |  | 8d | 2012-11-12 | 2012-11-21 | 67 | 25d | 0d |  |  |
| 69 | 1.3.3.3 | Realizar manual de usuario |  | 8d | 2012-11-22 | 2012-12-03 | 68 | 25d | 0d |  |  |
| 70 | 1.3.3.4 | Realizar diccionario de datos |  | 3d | 2012-12-04 | 2012-12-06 | 69 | 25d | 0d |  |  |
| 71 | 1.3.3.5 | Realizar manual técnico |  | 5d | 2012-12-07 | 2012-12-13 | 70 | 25d |  |  |  |
| 72 | 1.4 | **Pruebas** |  | 21d | 2013-01-18 | 2013-02-15 | 32 | 0d |  |  | 648h |
| 73 | 1.4.1 | Pruebas Unitarias |  | 5d | 2013-01-18 | 2013-01-24 |  | 1d |  | AF; AP1; AP2 | 120h |
| 74 | 1.4.2 | Proveer servidor de pruebas para aplicación web | milestone | 3d | 2013-01-18 | 2013-01-22 |  | 0d |  | CPSAA | 24h |
| 75 | 1.4.3 | Probar flujo de webservice | milestone | 3d | 2013-01-23 | 2013-01-25 | 74 | 0d |  | CPSAA | 24h |
| 76 | 1.4.4 | Pruebas Integrales |  | 15d | 2013-01-28 | 2013-02-15 | 74, 75, 73 | 0d |  | CPSAA; AF; AP1; AP2 | 480h |

Notes:
- 51: -Se integrará con el SGCP, directamente a la BD.
- 54: -Se integrará con el SGCP, directamente a la BD.
- 57: -Implementar 5 tipos de reporte: pareto, tendencia, pie, barras, texto resumen. / -CPSAA tiene preferencias por alguna librería de reportes?. / -Se requiere exportación a xls, pdf? / -Implementar modulo con SGCP. Conexión directa o por una interfaz?
- 73: -Incluye las pruebas unitarias de la aplicación movil nativa (1día)
- 76: -Incluye detección de observaciones y corrección por parte de los analistas programadores. / -Incluye pruebas integrales de aplicación movil nativa (3 días entre correcciones)

| ID | WBS | Task | Duration | Start | Finish | Predecessors | Total slack | Resources | Work |
| --- | --- | --- | --- | --- | --- | --- | --- | --- | --- |
| 77 | 1.5 | **Pase a producción** | 1d | 2013-02-18 | 2013-02-18 | 72 | 0d | CPSAA | 8h |
| 78 | 1.5.1 | Realizar pase a producción | 1d | 2013-02-18 | 2013-02-18 |  | 0d |  |  |
| 79 | 1.6 | **Post-Producción** | 8d | 2013-02-19 | 2013-02-28 | 77 | 0d | AP1 | 64h |
| 80 | 1.6.1 | Realizar actividades de soporte | 8d | 2013-02-19 | 2013-02-28 |  | 0d |  |  |
| 81 | 1.7 | **Capacitación** | 6d | 2013-02-19 | 2013-02-26 | 77 | 2d | AF | 48h |
| 82 | 1.7.1 | Realizar capacitación a usuarios | 6d | 2013-02-19 | 2013-02-26 |  | 2d |  |  |

Notes:
- 79: -Incluye post producción de aplicación movil nativa (1 día)
- 81: -Incluye capacitación en uso de aplicación movil nativa (1 día)
